# Schematic Schedule

Schedule from MS Project, 2019-06-11 to 2019-10-10, A marks actual dates.

## Calendars

- Standard: Mon-Fri 08:00-12:00, 13:00-17:00; Sat-Sun off.

## Resources

| Resource |
| --- |
| SHK |
| Finance |
| Jit |
| <New Resource> |
| Fed Furn |
| Checkpoint Surveyors |
| Auqa Logic |
| SBX |
| Aqua logic |
| MB Council |
| SB PM |
| KM |
| Lessor |

## Schedule

| ID | WBS | Task | Type | Duration | Start | Finish | Predecessors | Complete | Remaining | Baseline start | Baseline finish | Baseline duration | Total slack | Resources | Work | Actual work | Text1 |
| --- | --- | --- | --- | --- | --- | --- | --- | --- | --- | --- | --- | --- | --- | --- | --- | --- | --- |
| 1 | 1 | **Base Drawings** |  | 38d | 2019-06-11 A | 2019-08-02 A |  | 100% |  | 2019-06-11 | 2019-08-06 | 40d |  |  | 376h | 376h |  |
| 2 | 1.1 | Alison Holiday | manual | 5d | 2019-06-26 A | 2019-07-02 A |  | 100% |  | 2019-06-26 | 2019-07-02 | 5d |  |  |  |  |  |
| 3 | 1.2 | Design Startup | manual | 5d | 2019-06-11 A | 2019-06-17 A |  | 100% |  | 2019-06-11 | 2019-06-17 | 5d |  |  |  |  |  |
| 4 | 1.3 | Design Concept | manual | 4d | 2019-06-18 A | 2019-06-21 A | 3 | 100% |  | 2019-06-18 | 2019-07-12 | 19d |  | SHK | 32h | 32h |  |
| 5 | 1.4 | SBX Review and Comment | manual | 1d | 2019-06-24 A | 2019-06-24 A | 4 | 100% |  |  |  |  |  |  |  |  |  |
| 6 | 1.5 | DD Draft Due | milestone, manual | 0d | 2019-07-09 A | 2019-07-09 A |  | 100% |  |  |  |  |  |  |  |  |  |
| 7 | 1.6 | DD Review and Comment | manual | 2d | 2019-07-10 A | 2019-07-11 A | 6FS+1d | 100% |  |  |  |  |  |  |  |  |  |
| 8 | 1.7 | Lessor DD Review and Letter of Consent | manual | 1w | 2019-06-25 A | 2019-07-01 A | 5 | 100% |  | 2019-07-15 | 2019-07-18 | 4d |  |  |  |  |  |
| 9 | 1.8 | Design Development | manual | 14d | 2019-06-25 A | 2019-07-12 A | 5 | 100% |  | 2019-07-15 | 2019-07-23 | 7d |  | SHK; KM | 224h | 224h |  |
| 10 | 1.9 | Jit Sketch Pack | manual | 6d | 2019-07-09 A | 2019-07-16 A |  | 100% |  |  |  |  |  |  |  |  |  |
| 11 | 1.10 | JIT Drawings 1st Round | manual | 5d | 2019-07-19 A | 2019-07-25 A | 10FS+3d | 100% |  | 2019-07-15 | 2019-07-26 | 10d |  | Jit | 40h | 40h |  |
| 12 | 1.11 | SBX Review and JIT reissue | manual | 5d | 2019-07-26 A | 2019-08-01 A | 11 | 100% |  | 2019-07-29 | 2019-08-05 | 6d |  | Jit; KM | 80h | 80h |  |
| 13 | 1.12 | Final Construction Drawings | milestone, manual | 0d | 2019-08-02 A | 2019-08-02 A | 12 | 100% |  | 2019-08-06 | 2019-08-06 | 0d |  |  |  |  |  |
| 14 | 2 | **Permissions** |  | 35d | 2019-07-29 A | 2019-09-13 |  | 92% | 2.92d | 2019-07-29 | 2019-08-30 | 25d | 18d |  | 392h | 382h |  |
| 15 | 2.1 | Hydro Drawings (Aqua logical) | manual | 4d | 2019-08-02 A | 2019-08-07 A | 13 | 100% |  | 2019-07-29 | 2019-08-02 | 5d |  | Aqua logic | 32h | 32h |  |
| 16 | 2.2 | Hydraulics Permit (MB Council) |  | 4w | 2019-08-08 A | 2019-09-04 A | 15 | 100% |  | 2019-08-05 | 2019-08-30 | 4w |  | KM | 160h | 160h |  |
| 17 | 2.3 | Checkpoint Surveyors | manual | 1w | 2019-09-02 A | 2019-09-06 | 55 | 75% | 0.25w | 2019-08-06 | 2019-08-19 | 2w |  | Checkpoint Surveyors | 40h | 30h | Likely can use 1st Jit if everything is set |
| 18 | 2.4 | Building Permit |  | 1w | 2019-09-09 | 2019-09-13 | 17, 21 |  |  | 2019-08-20 | 2019-08-20 | 0d | 18d |  |  |  |  |
| 19 | 2.5 | RDMQ Prepare | manual | 1d | 2019-07-29 A | 2019-07-29 A | 11FS+1d | 100% |  |  |  |  |  |  |  |  |  |
| 20 | 2.6 | Food Business License App | manual | 4w | 2019-08-09 A | 2019-09-05 A | 15 | 100% |  | 2019-08-05 | 2019-08-30 | 4w |  | KM | 160h | 160h |  |
| 21 | 2.7 | Health and Safety Review | manual | 4w | 2019-08-08 A | 2019-09-04 A | 15 | 100% |  |  |  |  |  |  |  |  |  |
| 22 | 3 | **Procurement** |  | 47d | 2019-07-15 A | 2019-09-17 |  | 73% | 12.5d | 2019-07-15 | 2019-09-13 | 45d? | 16d |  | 1120h | 820h |  |
| 23 | 3.1 | Request SSI Quote | manual | 5d | 2019-07-15 A | 2019-07-19 A | 9 | 100% |  | 2019-07-24 | 2019-07-30 | 5d |  | KM | 40h | 40h |  |
| 24 | 3.2 | SSI Shipping & Arrival | manual | 6w | 2019-07-22 A | 2019-08-30 | 23 | 75% | 1.5w | 2019-07-31 | 2019-09-03 | 5w |  | KM | 240h | 180h |  |

| ID | WBS | Task | Type | Duration | Start | Finish | Predecessors | Complete | Remaining | Baseline start | Baseline finish | Baseline duration | Total slack | Resources | Work | Actual work |
| --- | --- | --- | --- | --- | --- | --- | --- | --- | --- | --- | --- | --- | --- | --- | --- | --- |
| 25 | 3.3 | **Signage** |  | 47d | 2019-07-15 A | 2019-09-17 |  | 68% | 15d |  |  |  | 16d |  | 376h | 256h |
| 26 | 3.3.1 | Request Signage Quote | manual | 3.4w | 2019-07-15 A | 2019-08-06 A | 9 | 100% |  | 2019-07-15 | 2019-07-19 | 1w |  | KM | 136h | 136h |
| 27 | 3.3.2 | Signage PO Drop Dead | milestone, manual | 0d | 2019-08-05 A | 2019-08-05 A | 65SS-6w | 100% |  |  |  |  |  |  |  |  |
| 28 | 3.3.3 | Signage Lead Time |  | 6w | 2019-08-07 A | 2019-09-17 | 26 | 50% | 3w | 2019-07-22 | 2019-09-06 | 7w | 16d | KM | 240h | 120h |
| 29 | 3.4 | Request Lighting Quote | manual | 10d | 2019-07-15 A | 2019-07-26 A | 9 | 100% |  | 2019-07-24 | 2019-07-30 | 5d |  | KM | 80h | 80h |
| 30 | 3.5 | Request Security Quote (Paul-Tec) | inactive, manual | 5d | 2019-07-29 | 2019-08-02 | 11 |  |  | 2019-07-29 | 2019-08-02 | 5d |  | KM | 40h |  |
| 31 | 3.6 | Request In-Store Music Quote? | inactive, manual | 1d? | 2019-07-29 | 2019-07-29 | 11 |  |  | 2019-07-29 | 2019-07-29 | 1d? |  |  |  |  |
| 32 | 3.7 | Request Locksmith Quote (RAM) | manual | 5d | 2019-08-02 | 2019-08-08 | 13 |  |  | 2019-07-29 | 2019-08-02 | 5d |  | KM | 40h |  |
| 33 | 3.8 | Request Tile quote | manual | 3d | 2019-07-15 A | 2019-07-17 A | 9 | 100% |  | 2019-07-15 | 2019-07-19 | 5d |  | KM | 24h | 24h |
| 34 | 3.9 | Tile Shipping & Arrival |  | 8w | 2019-07-18 A | 2019-09-11 | 33 | 75% | 2w | 2019-07-22 | 2019-09-13 | 8w | 20d | KM | 320h | 240h |
| 35 | 3.10 | Noel Quotes | manual | 1d | 2019-07-26 A | 2019-07-26 A | 11 | 100% |  |  |  |  |  |  |  |  |
| 36 | 4 | **Casework process** |  | 12.2w | 2019-06-21 A | 2019-09-13 |  | 89% | 1.28w | 2019-06-21 | 2019-09-13 | 12.2w |  |  |  |  |
| 37 | 4.1 | FF Receive SD / Produce shop drawings | manual | 6d | 2019-06-21 A | 2019-06-28 A |  | 100% |  | 2019-06-21 | 2019-06-28 | 6d |  |  |  |  |
| 38 | 4.2 | FF Submit Shop Drawings | manual | 1d | 2019-06-28 A | 2019-06-28 A | 37FS-1d | 100% |  | 2019-06-28 | 2019-06-28 | 1d |  |  |  |  |
| 39 | 4.3 | SBX Comments/FF Revise | manual | 3d | 2019-06-28 A | 2019-07-02 A | 38FS-1d | 100% |  | 2019-06-28 | 2019-07-02 | 3d |  |  |  |  |
| 40 | 4.4 | SBX Approve Shop Drawings | manual | 1d | 2019-07-03 A | 2019-07-03 A | 39 | 100% |  | 2019-07-03 | 2019-07-03 | 1d |  |  |  |  |
| 41 | 4.5 | FF Submit Proposal | manual | 2d | 2019-07-04 A | 2019-07-05 A | 40 | 100% |  | 2019-07-04 | 2019-07-05 | 2d |  |  |  |  |
| 42 | 4.6 | SBX Issue PO | manual | 1d | 2019-07-08 A | 2019-07-08 A | 41 | 100% |  | 2019-07-08 | 2019-07-08 | 1d |  |  |  |  |
| 43 | 4.7 | FF Production | manual | 21d | 2019-07-08 A | 2019-08-05 A | 42FS-1d | 100% |  | 2019-07-08 | 2019-08-05 | 21d |  |  |  |  |
| 44 | 4.8 | Bar Delivery Date | manual | 16d | 2019-08-06 A | 2019-08-27 A | 43 | 100% |  | 2019-08-06 | 2019-09-06 | 24d |  |  |  |  |
| 45 | 4.9 | Contingency | manual | 6d | 2019-08-28 | 2019-09-04 | 44 |  |  | 2019-09-09 | 2019-09-16 | 6d |  |  |  |  |
| 46 | 5 | **Additional Panelling** | inactive | 33d | 2019-08-07 | 2019-09-20 |  |  |  |  |  |  | 0d |  |  |  |
| 47 | 5.1 | Approval of Drawings | milestone, inactive, manual | 0d | 2019-08-07 | 2019-08-07 |  |  |  |  |  |  |  |  |  |  |
| 48 | 5.2 | Production | inactive, manual | 3w | 2019-08-07 | 2019-08-27 | 47 |  |  |  |  |  |  |  |  |  |
| 49 | 5.3 | Shipping and Arrival | inactive, manual | 2w | 2019-09-02 | 2019-09-13 |  |  |  |  |  |  |  |  |  |  |
| 50 | 5.4 | Customs Contingency | inactive | 1w | 2019-09-16 | 2019-09-20 | 49 |  |  |  |  |  | 13d |  |  |  |

| ID | WBS | Task | Type | Duration | Start | Finish | Predecessors | Complete | Remaining | Baseline start | Baseline finish | Baseline duration | Total slack | Free slack | Constraint |
| --- | --- | --- | --- | --- | --- | --- | --- | --- | --- | --- | --- | --- | --- | --- | --- |
| 51 | 6 | **Tender process** |  | 31d | 2019-08-02 A | 2019-09-13 |  | 51% | 15.08d | 2019-08-06 | 2019-09-11 | 27d | 0d |  |  |
| 52 | 6.1 | Prepare Tender Pack | manual | 6d | 2019-08-02 A | 2019-08-09 A | 13 | 100% |  | 2019-08-06 | 2019-08-12 | 1w |  |  |  |
| 53 | 6.2 | Tender | manual | 2.6w | 2019-08-12 A | 2019-08-28 A | 52 | 100% |  | 2019-08-15 | 2019-08-28 | 2w |  |  |  |
| 54 | 6.3 | Structural Drawings and Cert | manual | 10d | 2019-08-26 | 2019-09-06 | 53 |  |  | 2019-07-29 | 2019-08-02 | 5d |  |  |  |
| 55 | 6.4 | Issue award pack | manual | 0.6w | 2019-08-26 | 2019-08-28 | 53 |  |  | 2019-08-29 | 2019-09-04 | 1w |  |  |  |
| 56 | 6.5 | Gear up | manual | 1w | 2019-09-09 | 2019-09-13 | 55 |  |  | 2019-09-05 | 2019-09-11 | 1w |  |  |  |
| 57 | 7 | **Lessor Work** |  | 29d | 2019-08-08 | 2019-09-17 |  |  |  | 2019-07-29 | 2019-09-16 | 35d | 0d |  |  |
| 58 | 7.1 | CAT 1 Pricing Plan W/ RDMQ | manual | 10d | 2019-08-08 | 2019-08-21 | 19, 15 |  |  | 2019-07-29 | 2019-08-09 | 10d |  |  |  |
| 59 | 7.2 | CAT 1 Pricing Review |  | 4d | 2019-08-22 | 2019-08-27 | 58 |  |  | 2019-08-12 | 2019-08-15 | 4d | 16d | 0d |  |
| 60 | 7.3 | Pay Westfield (2-weeks) |  | 2w | 2019-08-28 | 2019-09-10 | 59 |  |  | 2019-08-16 | 2019-08-29 | 2w | 16d | 0d |  |
| 61 | 7.4 | Cat 1 Setout W/ Final Drawings | manual | 1d | 2019-09-02 | 2019-09-02 | 55 |  |  |  |  |  |  |  |  |
| 62 | 7.5 | CAT 1 Works |  | 5d | 2019-09-11 | 2019-09-17 | 16, 60, 61 |  |  | 2019-09-02 | 2019-09-10 | 7d | 16d |  |  |
| 63 | 7.6 | Tenant Space Handover | milestone, manual | 0d | 2019-09-16 | 2019-09-16 |  |  |  | 2019-09-16 | 2019-09-16 | 0d |  |  |  |
| 64 | 8 | **Construction & Handover** |  | 16d? | 2019-09-18 | 2019-10-10 |  |  |  | 2019-09-16 | 2019-10-10 | 18d | 0d |  |  |
| 65 | 8.1 | Fitout Period | manual | 13d | 2019-09-18 | 2019-10-04 |  |  |  | 2019-09-16 | 2019-10-04 | 15d |  |  |  |
| 66 | 8.2 | Health during Fitout inspection | manual | 1d? | 2019-09-25 | 2019-09-25 | 65SS+5d |  |  |  |  |  |  |  |  |
| 67 | 8.3 | Final health inspection | milestone, manual | 0d | 2019-10-03 | 2019-10-03 |  |  |  |  |  |  |  |  |  |
| 68 | 8.4 | PCL - Pentair delivery | milestone, manual | 0d | 2019-09-20 | 2019-09-20 |  |  |  |  |  |  |  |  |  |
| 69 | 8.5 | PCL - Paul Tec, NST, Oracle, CBA | milestone, manual | 0d | 2019-10-02 | 2019-10-02 |  |  |  |  |  |  |  |  |  |
| 70 | 8.6 | PCL - Fire Ext/blankets, Oven, Dishwasher, True, 3Fold, Kinco, Winc 1 | milestone, manual | 0d | 2019-10-02 | 2019-10-02 |  |  |  |  |  |  |  |  |  |
| 71 | 8.7 | PCL - Safe, Ice, Mastrena, Fridges, Grinder, blender, bins | milestone, manual | 0d | 2019-10-03 | 2019-10-03 |  |  |  |  |  |  |  |  |  |
| 72 | 8.8 | PCL - Locksmith, Pest Control | milestone, manual | 0d | 2019-10-04 | 2019-10-04 |  |  |  |  |  |  |  |  |  |
| 73 | 8.9 | Muralist | manual | 4d | 2019-10-02 | 2019-10-06 | 65FF-2d |  |  |  |  |  |  |  |  |
| 74 | 8.10 | Handover to Ops | milestone, manual | 0d | 2019-10-07 | 2019-10-07 |  |  |  | 2019-10-04 | 2019-10-04 | 0d |  |  |  |
| 75 | 8.11 | Stocking |  | 3d | 2019-10-07 | 2019-10-09 | 74 |  |  | 2019-10-04 | 2019-10-09 | 4d | 0d |  | finish no earlier than 2019-10-09 |
| 76 | 8.12 | Trade | milestone, manual | 0d | 2019-10-10 | 2019-10-10 |  |  |  | 2019-10-10 | 2019-10-10 | 0d |  |  |  |
